# Year 3 Project Plan 7 30

Schedule from MS Project, 2008-07-14 to 2008-09-25, A marks actual dates.
Persistent Systems Pvt. Ltd.

## Calendars

- Standard: Mon-Fri 08:00-12:00, 13:00-17:00; Sat-Sun off. Exceptions (off unless hours are given): 2008-08-15 (Holiday).

## Resources

| Resource |
| --- |
| Chandrakant Talele |
| Lalit Chand |
| Chetan Patil |
| Atul Jawale |
| Hrishikesh Rajpathak |
| Rushikesh Subhedar |
| Deepak Shingan |

## Schedule

| ID | WBS | Task | Duration | Start | Finish | Predecessors | Complete | Remaining | Total slack | Free slack | Constraint | Resources | Work | Actual work |
| --- | --- | --- | --- | --- | --- | --- | --- | --- | --- | --- | --- | --- | --- | --- |
| 1 | 1 | **Milestone 1** | 53d? | 2008-07-14 A | 2008-09-25 |  | 71% | 15.63d? | 0d |  |  |  | 1144h | 848h |
| 2 | 1.1 | **caB2B_Y3_020Technology Stack Migration** | 27d | 2008-07-14 A | 2008-08-20 A |  | 100% |  |  |  |  |  | 200h | 200h |
| 3 | 1.1.1 | **Migrate to Jboss 4.0.5 GA** | 2d | 2008-07-14 A | 2008-07-15 A |  | 100% |  |  |  |  |  | 16h | 16h |
| 4 | 1.1.1.1 | Changes in existing codebase | 1d | 2008-07-14 A | 2008-07-14 A |  | 100% |  |  |  | start no earlier than 2008-07-14 | Lalit Chand | 8h | 8h |
| 5 | 1.1.1.2 | Changes in deployment process | 1d | 2008-07-15 A | 2008-07-15 A | 4 | 100% |  |  |  |  | Lalit Chand | 8h | 8h |
| 6 | 1.1.2 | **Migrate to EJB 3.0** | 13d | 2008-07-16 A | 2008-08-01 A |  | 100% |  |  |  |  |  | 72h | 72h |
| 7 | 1.1.2.1 | Understanding EJB 3.0 | 5d | 2008-07-16 A | 2008-07-22 A | 5 | 100% |  |  |  |  | Lalit Chand | 40h | 40h |
| 8 | 1.1.2.2 | Changes in existing codebase | 3d | 2008-07-23 A | 2008-07-25 A | 7 | 100% |  |  |  |  | Lalit Chand | 24h | 24h |
| 9 | 1.1.2.3 | Changes in deployment process | 1d | 2008-07-28 A | 2008-07-28 A | 8 | 100% |  |  |  |  | Lalit Chand | 8h | 8h |
| 10 | 1.1.2.4 | Testing and verifications | 4d | 2008-07-29 A | 2008-08-01 A | 9 | 100% |  |  |  |  |  |  |  |
| 11 | 1.1.3 | Reverting back EJB 3.0 changes | 3d | 2008-08-04 A | 2008-08-06 A | 6 | 100% |  |  |  |  | Lalit Chand | 24h | 24h |
| 12 | 1.1.4 | **Query Module** | 12d | 2008-08-04 A | 2008-08-20 A |  | 100% |  |  |  |  |  | 88h | 88h |
| 13 | 1.1.4.1 | Query Module Release UI | 3d | 2008-08-18 A | 2008-08-20 A | 84 | 100% |  |  |  |  | Deepak Shingan | 24h | 24h |
| 14 | 1.1.4.2 | Query Module Release backend changes | 8d | 2008-08-04 A | 2008-08-20 A | 97 | 100% |  |  |  | start no earlier than 2008-08-04 | Chetan Patil | 64h | 64h |
| 15 | 1.2 | **Session Management of EJB (For user based expr and queries)** | 13d | 2008-08-07 A | 2008-08-26 |  | 60% | 5.2d | 12d | 0d |  |  | 40h | 24h |
| 16 | 1.2.1 | Understand stateful EJBs | 5d | 2008-08-07 A | 2008-08-26 | 14 | 60% | 2d | 12d |  |  | Lalit Chand | 40h | 24h |
| 17 | 1.3 | **caB2B_Y3_002-User based experiments** | 5d? | 2008-08-27 | 2008-09-02 | 15 |  |  | 12d | 0d |  |  | 40h |  |
| 18 | 1.3.1 | Requirement | 1d? | 2008-08-27 | 2008-08-27 |  |  |  | 5d | 0d |  | Lalit Chand | 8h |  |
| 19 | 1.3.2 | Design | 1d? | 2008-08-28 | 2008-08-28 | 18 |  |  | 5d | 0d |  | Lalit Chand | 8h |  |
| 20 | 1.3.3 | **Implementation** | 3d? | 2008-08-29 | 2008-09-02 |  |  |  | 12d |  |  |  | 24h |  |
| 21 | 1.3.3.1 | Saving experiments on user basis | 1d? | 2008-08-29 | 2008-08-29 | 19 |  |  | 5d | 0d |  | Lalit Chand | 8h |  |
| 22 | 1.3.3.2 | Changes needed at client-server interface to pass user info | 1d? | 2008-09-01 | 2008-09-01 | 21 |  |  | 5d | 0d |  | Lalit Chand | 8h |  |
| 23 | 1.3.3.3 | Fetch and display experiments based on user | 1d? | 2008-09-02 | 2008-09-02 | 22 |  |  | 5d |  |  | Lalit Chand | 8h |  |
| 24 | 1.4 | **caB2B_Y3_003-User based saved queries** | 5d? | 2008-09-03 | 2008-09-09 |  |  |  | 12d |  |  |  | 40h |  |
| 25 | 1.4.1 | Requirement | 1d? | 2008-09-03 | 2008-09-03 | 17 |  |  | 5d | 0d |  | Lalit Chand | 8h |  |
| 26 | 1.4.2 | Design | 1d? | 2008-09-04 | 2008-09-04 | 25 |  |  | 5d | 0d |  | Lalit Chand | 8h |  |

| ID | WBS | Task | Duration | Start | Finish | Predecessors | Complete | Remaining | Total slack | Free slack | Constraint | Resources | Work | Actual work |
| --- | --- | --- | --- | --- | --- | --- | --- | --- | --- | --- | --- | --- | --- | --- |
| 27 | 1.4.3 | **Implementation** | 3d? | 2008-09-05 | 2008-09-09 |  |  |  | 12d |  |  |  | 24h |  |
| 28 | 1.4.3.1 | Saving queries on user basis | 1d? | 2008-09-05 | 2008-09-05 | 26 |  |  | 5d | 0d |  | Lalit Chand | 8h |  |
| 29 | 1.4.3.2 | Changes needed at client-server interface to pass user info | 1d? | 2008-09-08 | 2008-09-08 | 28 |  |  | 5d | 0d |  | Lalit Chand | 8h |  |
| 30 | 1.4.3.3 | Fetch and display experiments based on user | 1d? | 2008-09-09 | 2008-09-09 | 29 |  |  | 5d |  |  | Lalit Chand | 8h |  |
| 31 | 1.5 | **caB2B_Y3_001-Automatic cache update between admin and cab2b server** | 20d? | 2008-07-14 | 2008-08-08 |  |  |  | 33d |  |  |  |  |  |
| 32 | 1.5.1 | Requirement | 1d? | 2008-07-14 | 2008-07-14 |  |  |  | 39d |  |  |  |  |  |
| 33 | 1.5.2 | **Investigation** | 1d? | 2008-07-14 | 2008-07-14 |  |  |  | 52d |  |  |  |  |  |
| 34 | 1.5.2.1 | Investigate Component | 1d? | 2008-07-14 | 2008-07-14 |  |  |  | 39d |  |  |  |  |  |
| 35 | 1.5.2.2 | Developing Prototype | 1d? | 2008-07-14 | 2008-07-14 |  |  |  | 39d |  |  |  |  |  |
| 36 | 1.5.2.3 | Design | 1d? | 2008-07-14 | 2008-07-14 |  |  |  | 39d |  |  |  |  |  |
| 37 | 1.5.3 | **Implementation** | 20d? | 2008-07-14 | 2008-08-08 |  |  |  | 33d |  |  |  |  |  |
| 38 | 1.5.3.1 | Separating out Implementation Deployment Unit | 1d? | 2008-07-14 | 2008-07-14 |  |  |  | 39d |  |  |  |  |  |
| 39 | 1.5.3.2 | Changes needed in Deployment Process | 1d? | 2008-08-08 | 2008-08-08 |  |  |  | 20d |  | finish no earlier than 2008-08-08 |  |  |  |
| 40 | 1.5.4 | **Representing grid user in caB2B** | 1d? | 2008-07-14 | 2008-07-14 |  |  |  | 52d |  |  |  |  |  |
| 41 | 1.5.4.1 | Investigating APIs needed | 1d? | 2008-07-14 | 2008-07-14 |  |  |  | 39d |  |  |  |  |  |
| 42 | 1.5.4.2 | Design to store user identity locally | 1d? | 2008-07-14 | 2008-07-14 |  |  |  | 39d |  |  |  |  |  |
| 43 | 1.5.4.3 | Design review by external parties | 1d? | 2008-07-14 | 2008-07-14 |  |  |  | 39d |  |  |  |  |  |
| 44 | 1.6 | **Schedular component + notification functionality** | 37d | 2008-07-29 A | 2008-09-18 |  | 13% | 32.38d | 0d |  |  |  | 128h | 16h |
| 45 | 1.6.1 | **Schedular** | 28d | 2008-07-29 A | 2008-09-05 |  | 29% | 20d | 0d |  |  |  | 56h | 16h |
| 46 | 1.6.1.1 | Investigate Component | 2d | 2008-07-29 A | 2008-07-30 A |  | 100% |  |  |  |  | Chetan Patil | 16h | 16h |
| 47 | 1.6.1.2 | Developing Prototype | 5d | 2008-09-01 | 2008-09-05 |  |  |  | 0d |  | start no earlier than 2008-09-01 | Chetan Patil | 40h |  |
| 48 | 1.6.2 | **Notification** | 9d | 2008-09-08 | 2008-09-18 |  |  |  | 0d |  |  |  | 72h |  |
| 49 | 1.6.2.1 | UI mockup | 1d | 2008-09-08 | 2008-09-08 | 47 |  |  | 0d |  |  | Chetan Patil | 8h |  |
| 50 | 1.6.2.2 | UI implementation | 3d | 2008-09-09 | 2008-09-11 | 49 |  |  | 0d |  |  | Chetan Patil | 24h |  |
| 51 | 1.6.2.3 | Backend Implementation | 5d | 2008-09-12 | 2008-09-18 | 50 |  |  | 0d |  |  | Chetan Patil | 40h |  |

| ID | WBS | Task | Duration | Start | Finish | Predecessors | Complete | Remaining | Total slack | Constraint | Resources | Work | Actual work |
| --- | --- | --- | --- | --- | --- | --- | --- | --- | --- | --- | --- | --- | --- |
| 52 | 1.7 | **caB2B_Y3_004-Asynchronous execution of queries** | 5d? | 2008-09-19 | 2008-09-25 | 44 |  |  | 0d |  |  | 40h |  |
| 53 | 1.7.1 | Requirement | 1d? | 2008-09-19 | 2008-09-19 |  |  |  | 0d |  | Chetan Patil | 8h |  |
| 54 | 1.7.2 | Design | 1d? | 2008-09-22 | 2008-09-22 | 53 |  |  | 0d |  | Chetan Patil | 8h |  |
| 55 | 1.7.3 | **Implementation** | 3d? | 2008-09-23 | 2008-09-25 | 54 |  |  | 0d |  |  | 24h |  |
| 56 | 1.7.3.1 | Represent schedule | 1d? | 2008-09-23 | 2008-09-23 |  |  |  | 0d |  | Chetan Patil | 8h |  |
| 57 | 1.7.3.2 | Storing schedule and firing jobs | 1d? | 2008-09-24 | 2008-09-24 | 56 |  |  | 0d |  | Chetan Patil | 8h |  |
| 58 | 1.7.3.3 | Implementing job for query execution | 1d? | 2008-09-25 | 2008-09-25 | 57 |  |  | 0d |  | Chetan Patil | 8h |  |
| 59 | 1.8 | **caB2B_Y3_005-User to override the URLs** | 14d? | 2008-08-12 A | 2008-09-01 |  | 65% | 4.94d? | 18d |  |  | 136h | 88h |
| 60 | 1.8.1 | Requirement | 1d | 2008-08-12 A | 2008-08-12 A | 91 | 100% |  |  |  | Atul Jawale | 8h | 8h |
| 61 | 1.8.2 | UI mockups | 1d | 2008-08-13 A | 2008-08-13 A | 60 | 100% |  |  |  | Atul Jawale | 8h | 8h |
| 62 | 1.8.3 | Design | 1d | 2008-08-14 A | 2008-08-14 A | 61 | 100% |  |  |  | Atul Jawale | 8h | 8h |
| 63 | 1.8.4 | **Implementation** | 11d? | 2008-08-18 A | 2008-09-01 | 62 | 57% | 4.71d? | 18d |  |  | 112h | 64h |
| 64 | 1.8.4.1 | UI implementation | 4d | 2008-08-18 A | 2008-08-21 A |  | 100% |  |  |  | Atul Jawale | 32h | 32h |
| 65 | 1.8.4.2 | Backend integration | 4d | 2008-08-22 A | 2008-08-27 A | 64 | 100% |  |  |  | Atul Jawale | 32h | 32h |
| 66 | 1.8.4.3 | Unit testing | 6d? | 2008-08-25 | 2008-09-01 |  |  |  | 18d | finish no earlier than 2008-09-01 | Atul Jawale | 48h |  |
| 67 | 1.9 | **caB2B_Y3_006-Home page experiments links functional + show all** | 12d | 2008-07-14 A | 2008-07-29 A |  | 100% |  |  |  |  | 96h | 96h |
| 68 | 1.9.1 | Requirement | 1d | 2008-07-14 A | 2008-07-14 A |  | 100% |  |  | start no earlier than 2008-07-14 | Deepak Shingan | 8h | 8h |
| 69 | 1.9.2 | UI Mockups | 1d | 2008-07-15 A | 2008-07-15 A | 68 | 100% |  |  |  | Deepak Shingan | 8h | 8h |
| 70 | 1.9.3 | Design | 1d | 2008-07-16 A | 2008-07-16 A | 69 | 100% |  |  |  | Deepak Shingan | 8h | 8h |
| 71 | 1.9.4 | **Implementation** | 9d | 2008-07-17 A | 2008-07-29 A |  | 100% |  |  |  |  | 72h | 72h |
| 72 | 1.9.4.1 | Showing recent experiments | 2d | 2008-07-17 A | 2008-07-18 A | 70 | 100% |  |  |  | Deepak Shingan | 16h | 16h |
| 73 | 1.9.4.2 | Making links in stack box funtional | 2d | 2008-07-21 A | 2008-07-22 A | 72 | 100% |  |  |  | Deepak Shingan | 16h | 16h |
| 74 | 1.9.4.3 | Show All to display all experiments on right side | 3d | 2008-07-23 A | 2008-07-25 A | 73 | 100% |  |  |  | Deepak Shingan | 24h | 24h |
| 75 | 1.9.4.4 | Click on any experiment from show all table to open experiment | 2d | 2008-07-28 A | 2008-07-29 A | 74 | 100% |  |  |  | Deepak Shingan | 16h | 16h |

| ID | WBS | Task | Duration | Start | Finish | Predecessors | Complete | Constraint | Resources | Work | Actual work |
| --- | --- | --- | --- | --- | --- | --- | --- | --- | --- | --- | --- |
| 76 | 1.10 | **caB2B_Y3_007-Home page category links functional + show all** | 12d | 2008-07-30 A | 2008-08-14 A |  | 100% |  |  | 96h | 96h |
| 77 | 1.10.1 | Requirement | 1d | 2008-07-30 A | 2008-07-30 A | 67 | 100% |  | Deepak Shingan | 8h | 8h |
| 78 | 1.10.2 | UI Mockups | 1d | 2008-07-31 A | 2008-07-31 A | 77 | 100% |  | Deepak Shingan | 8h | 8h |
| 79 | 1.10.3 | Design | 1d | 2008-08-01 A | 2008-08-01 A | 78 | 100% |  | Deepak Shingan | 8h | 8h |
| 80 | 1.10.4 | **Implementation** | 9d | 2008-08-04 A | 2008-08-14 A |  | 100% |  |  | 72h | 72h |
| 81 | 1.10.4.1 | Showing all categories | 2d | 2008-08-04 A | 2008-08-05 A | 79 | 100% |  | Deepak Shingan | 16h | 16h |
| 82 | 1.10.4.2 | Clicking on category in stack box to open add limit page | 2d | 2008-08-06 A | 2008-08-07 A | 81 | 100% |  | Deepak Shingan | 16h | 16h |
| 83 | 1.10.4.3 | Show All to display all categories on right side | 3d | 2008-08-08 A | 2008-08-12 A | 82 | 100% |  | Deepak Shingan | 24h | 24h |
| 84 | 1.10.4.4 | Click on any category from show all table to open it in add limit page | 2d | 2008-08-13 A | 2008-08-14 A | 83 | 100% |  | Deepak Shingan | 16h | 16h |
| 85 | 1.11 | **caB2B_Y3_008-Popular categories** | 19d | 2008-07-28 A | 2008-08-22 A |  | 100% |  |  | 144h | 144h |
| 86 | 1.11.1 | Requirement | 8d | 2008-07-28 A | 2008-08-06 A |  | 100% | start no earlier than 2008-07-28 | Hrishikesh Rajpathak | 64h | 64h |
| 87 | 1.11.2 | Design | 5d | 2008-08-07 A | 2008-08-14 A | 86 | 100% | finish no earlier than 2008-08-14 | Hrishikesh Rajpathak | 40h | 40h |
| 88 | 1.11.3 | **Implementation** | 5d | 2008-08-18 A | 2008-08-22 A |  | 100% |  |  | 40h | 40h |
| 89 | 1.11.3.1 | Calculating popularity | 2d | 2008-08-18 A | 2008-08-19 A | 87 | 100% |  | Hrishikesh Rajpathak | 16h | 16h |
| 90 | 1.11.3.2 | Storing and using popularity | 3d | 2008-08-20 A | 2008-08-22 A | 89 | 100% | finish no earlier than 2008-08-08 | Hrishikesh Rajpathak | 24h | 24h |
| 91 | 1.12 | **caB2B_Y3_009-Fixing the current washU services for index service** | 21d | 2008-07-14 A | 2008-08-11 A |  | 100% |  |  | 168h | 168h |
| 92 | 1.12.1 | Learning service, discovery and metadata | 5d | 2008-07-14 A | 2008-07-18 A |  | 100% |  | Atul Jawale | 40h | 40h |
| 93 | 1.12.2 | Finding the cause | 5d | 2008-07-21 A | 2008-07-25 A | 92 | 100% |  | Atul Jawale | 40h | 40h |
| 94 | 1.12.3 | Investigating on fixes / solutions | 5d | 2008-07-28 A | 2008-08-01 A | 93 | 100% |  | Atul Jawale | 40h | 40h |
| 95 | 1.12.4 | Fixing Services | 6d | 2008-08-04 A | 2008-08-11 A | 94 | 100% |  | Atul Jawale | 48h | 48h |
| 96 | 1.13 | **Bugs** | 2d | 2008-07-31 A | 2008-08-01 A |  | 100% |  |  | 16h | 16h |
| 97 | 1.13.1 | Bug# 8070 | 2d | 2008-07-31 A | 2008-08-01 A | 46 | 100% | start no earlier than 2008-08-04 | Chetan Patil | 16h | 16h |
| 98 | 2 | caTissue core service instance | 1d? | 2008-08-08 A | 2008-08-08 A |  | 100% | start no earlier than 2008-08-08 | Atul Jawale | 8h | 8h |
| 99 | 3 | Bug 9090 & 9138 fix | 2d? | 2008-08-26 A | 2008-08-27 A |  | 100% | finish no earlier than 2008-08-27 | Chetan Patil | 16h | 16h |
| 100 | 4 | Bug 9221 fix | 2d? | 2008-08-28 A | 2008-08-29 A |  | 100% | finish no earlier than 2008-08-29 | Chetan Patil | 16h | 16h |

| ID | WBS | Task | Duration | Start | Finish | Total slack |
| --- | --- | --- | --- | --- | --- | --- |
| 101 | 5 | **Milestone 2** | 15d? | 2008-07-14 | 2008-08-01 | 38d |
| 102 | 5.1 | **caB2B_Y3_010-Support WS enumerations data services** | 1d? | 2008-07-14 | 2008-07-14 | 52d |
| 103 | 5.1.1 | Requirement | 1d? | 2008-07-14 | 2008-07-14 | 45d |
| 104 | 5.1.2 | **Investigation** | 1d? | 2008-07-14 | 2008-07-14 | 52d |
| 105 | 5.1.2.1 | Investigate Component | 1d? | 2008-07-14 | 2008-07-14 | 45d |
| 106 | 5.1.2.2 | Developing Prototype | 1d? | 2008-07-14 | 2008-07-14 | 45d |
| 107 | 5.1.3 | Design | 1d? | 2008-07-14 | 2008-07-14 | 45d |
| 108 | 5.1.4 | **Implementation** | 1d? | 2008-07-14 | 2008-07-14 | 52d |
| 109 | 5.1.4.1 | Separating out Implementation Deployment Unit | 1d? | 2008-07-14 | 2008-07-14 | 45d |
| 110 | 5.1.4.2 | Changes needed in Deployment Process | 1d? | 2008-07-14 | 2008-07-14 | 45d |
| 111 | 5.2 | **caB2B_Y3_011-Need to revisit save / not save strategies-yet to clarify** | 1d? | 2008-07-14 | 2008-07-14 | 52d |
| 112 | 5.2.1 | Requirement | 1d? | 2008-07-14 | 2008-07-14 | 45d |
| 113 | 5.2.2 | **Investigation** | 1d? | 2008-07-14 | 2008-07-14 | 52d |
| 114 | 5.2.2.1 | Investigate Component | 1d? | 2008-07-14 | 2008-07-14 | 45d |
| 115 | 5.2.2.2 | Developing Prototype | 1d? | 2008-07-14 | 2008-07-14 | 45d |
| 116 | 5.2.3 | Design | 1d? | 2008-07-14 | 2008-07-14 | 45d |
| 117 | 5.2.4 | **Implementation** | 1d? | 2008-07-14 | 2008-07-14 | 52d |
| 118 | 5.2.4.1 | Separating out Implementation Deployment Unit | 1d? | 2008-07-14 | 2008-07-14 | 45d |
| 119 | 5.2.4.2 | Changes needed in Deployment Process | 1d? | 2008-07-14 | 2008-07-14 | 45d |
| 120 | 5.3 | **caB2B_Y3_012-Asynchronous of save data list** | 15d? | 2008-07-14 | 2008-08-01 | 38d |
| 121 | 5.3.1 | Requirement | 1d? | 2008-07-14 | 2008-07-14 | 45d |
| 122 | 5.3.2 | **Investigation** | 1d? | 2008-07-14 | 2008-07-14 | 52d |
| 123 | 5.3.2.1 | Investigate Component | 1d? | 2008-07-14 | 2008-07-14 | 45d |
| 124 | 5.3.2.2 | Developing Prototype | 1d? | 2008-07-14 | 2008-07-14 | 45d |
| 125 | 5.3.3 | Design | 1d? | 2008-07-14 | 2008-07-14 | 45d |

| ID | WBS | Task | Duration | Start | Finish | Total slack | Constraint |
| --- | --- | --- | --- | --- | --- | --- | --- |
| 126 | 5.3.4 | **Implementation** | 15d? | 2008-07-14 | 2008-08-01 | 38d |  |
| 127 | 5.3.4.1 | Separating out Implementation Deployment Unit | 1d? | 2008-07-14 | 2008-07-14 | 45d |  |
| 128 | 5.3.4.2 | Changes needed in Deployment Process | 1d? | 2008-08-01 | 2008-08-01 | 31d | finish no earlier than 2008-08-01 |
| 129 | 5.4 | **caB2B_Y3_013-intermodel joins for a group like washU, NCICB , Intermodel joins with pair of service instances** | 1d? | 2008-07-14 | 2008-07-14 | 52d |  |
| 130 | 5.4.1 | Requirement | 1d? | 2008-07-14 | 2008-07-14 | 45d |  |
| 131 | 5.4.2 | **Investigation** | 1d? | 2008-07-14 | 2008-07-14 | 52d |  |
| 132 | 5.4.2.1 | Investigate Component | 1d? | 2008-07-14 | 2008-07-14 | 45d |  |
| 133 | 5.4.2.2 | Developing Prototype | 1d? | 2008-07-14 | 2008-07-14 | 45d |  |
| 134 | 5.4.3 | Design | 1d? | 2008-07-14 | 2008-07-14 | 45d |  |
| 135 | 5.4.4 | **Implementation** | 1d? | 2008-07-14 | 2008-07-14 | 52d |  |
| 136 | 5.4.4.1 | Separating out Implementation Deployment Unit | 1d? | 2008-07-14 | 2008-07-14 | 45d |  |
| 137 | 5.4.4.2 | Changes needed in Deployment Process | 1d? | 2008-07-14 | 2008-07-14 | 45d |  |
| 138 | 5.5 | **caB2B_Y3_014-Experiments with multiple datalists, edit expr to add data list with way to re-query (more likely)** | 1d? | 2008-07-14 | 2008-07-14 | 52d |  |
| 139 | 5.5.1 | Requirement | 1d? | 2008-07-14 | 2008-07-14 | 45d |  |
| 140 | 5.5.2 | **Investigation** | 1d? | 2008-07-14 | 2008-07-14 | 52d |  |
| 141 | 5.5.2.1 | Investigate Component | 1d? | 2008-07-14 | 2008-07-14 | 45d |  |
| 142 | 5.5.2.2 | Developing Prototype | 1d? | 2008-07-14 | 2008-07-14 | 45d |  |
| 143 | 5.5.3 | Design | 1d? | 2008-07-14 | 2008-07-14 | 45d |  |
| 144 | 5.5.4 | **Implementation** | 1d? | 2008-07-14 | 2008-07-14 | 52d |  |
| 145 | 5.5.4.1 | Separating out Implementation Deployment Unit | 1d? | 2008-07-14 | 2008-07-14 | 45d |  |
| 146 | 5.5.4.2 | Changes needed in Deployment Process | 1d? | 2008-07-14 | 2008-07-14 | 45d |  |
| 147 | 5.6 | **caB2B_Y3_015-Support for getting probe data from caArray. For CEL files no need to bring data back to cab2b server, just get the URL and send it to analytical service** | 1d? | 2008-07-14 | 2008-07-14 | 52d |  |
| 148 | 5.6.1 | Requirement | 1d? | 2008-07-14 | 2008-07-14 | 45d |  |
| 149 | 5.6.2 | **Investigation** | 1d? | 2008-07-14 | 2008-07-14 | 52d |  |
| 150 | 5.6.2.1 | Investigate Component | 1d? | 2008-07-14 | 2008-07-14 | 45d |  |
| 151 | 5.6.2.2 | Developing Prototype | 1d? | 2008-07-14 | 2008-07-14 | 45d |  |
| 152 | 5.6.3 | Design | 1d? | 2008-07-14 | 2008-07-14 | 45d |  |

| ID | WBS | Task | Duration | Start | Finish | Total slack |
| --- | --- | --- | --- | --- | --- | --- |
| 153 | 5.6.4 | **Implementation** | 1d? | 2008-07-14 | 2008-07-14 | 52d |
| 154 | 5.6.4.1 | Separating out Implementation Deployment Unit | 1d? | 2008-07-14 | 2008-07-14 | 45d |
| 155 | 5.6.4.2 | Changes needed in Deployment Process | 1d? | 2008-07-14 | 2008-07-14 | 45d |
| 156 | 5.7 | **caB2B_Y3_016-Support basic analytical services (support for ICR services, if needed, do customizations)** | 1d? | 2008-07-14 | 2008-07-14 | 52d |
| 157 | 5.7.1 | Requirement | 1d? | 2008-07-14 | 2008-07-14 | 45d |
| 158 | 5.7.2 | **Investigation** | 1d? | 2008-07-14 | 2008-07-14 | 52d |
| 159 | 5.7.2.1 | Investigate Component | 1d? | 2008-07-14 | 2008-07-14 | 45d |
| 160 | 5.7.2.2 | Developing Prototype | 1d? | 2008-07-14 | 2008-07-14 | 45d |
| 161 | 5.7.3 | Design | 1d? | 2008-07-14 | 2008-07-14 | 45d |
| 162 | 5.7.4 | **Implementation** | 1d? | 2008-07-14 | 2008-07-14 | 52d |
| 163 | 5.7.4.1 | Separating out Implementation Deployment Unit | 1d? | 2008-07-14 | 2008-07-14 | 45d |
| 164 | 5.7.4.2 | Changes needed in Deployment Process | 1d? | 2008-07-14 | 2008-07-14 | 45d |
| 165 | 5.8 | **caB2B_Y3_017-Viewers for supported analytical services** | 1d? | 2008-07-14 | 2008-07-14 | 52d |
| 166 | 5.8.1 | Requirement | 1d? | 2008-07-14 | 2008-07-14 | 45d |
| 167 | 5.8.2 | **Investigation** | 1d? | 2008-07-14 | 2008-07-14 | 52d |
| 168 | 5.8.2.1 | Investigate Component | 1d? | 2008-07-14 | 2008-07-14 | 45d |
| 169 | 5.8.2.2 | Developing Prototype | 1d? | 2008-07-14 | 2008-07-14 | 45d |
| 170 | 5.8.3 | Design | 1d? | 2008-07-14 | 2008-07-14 | 45d |
| 171 | 5.8.4 | **Implementation** | 1d? | 2008-07-14 | 2008-07-14 | 52d |
| 172 | 5.8.4.1 | Separating out Implementation Deployment Unit | 1d? | 2008-07-14 | 2008-07-14 | 45d |
| 173 | 5.8.4.2 | Changes needed in Deployment Process | 1d? | 2008-07-14 | 2008-07-14 | 45d |
| 174 | 5.9 | **caB2B_Y3_018-Returning result of a federated query even if only one of the instances is failed** | 1d? | 2008-07-14 | 2008-07-14 | 52d |
| 175 | 5.9.1 | Requirement | 1d? | 2008-07-14 | 2008-07-14 | 45d |
| 176 | 5.9.2 | **Investigation** | 1d? | 2008-07-14 | 2008-07-14 | 52d |
| 177 | 5.9.2.1 | Investigate Component | 1d? | 2008-07-14 | 2008-07-14 | 45d |
| 178 | 5.9.2.2 | Developing Prototype | 1d? | 2008-07-14 | 2008-07-14 | 45d |
| 179 | 5.9.3 | Design | 1d? | 2008-07-14 | 2008-07-14 | 45d |

| ID | WBS | Task | Duration | Start | Finish | Total slack |
| --- | --- | --- | --- | --- | --- | --- |
| 180 | 5.9.4 | **Implementation** | 1d? | 2008-07-14 | 2008-07-14 | 52d |
| 181 | 5.9.4.1 | Separating out Implementation Deployment Unit | 1d? | 2008-07-14 | 2008-07-14 | 45d |
| 182 | 5.9.4.2 | Changes needed in Deployment Process | 1d? | 2008-07-14 | 2008-07-14 | 45d |
| 183 | 5.10 | **caB2B_Y3_019-Intermodel joins with multiple attributes** | 1d? | 2008-07-14 | 2008-07-14 | 52d |
| 184 | 5.10.1 | Requirement | 1d? | 2008-07-14 | 2008-07-14 | 45d |
| 185 | 5.10.2 | **Investigation** | 1d? | 2008-07-14 | 2008-07-14 | 52d |
| 186 | 5.10.2.1 | Investigate Component | 1d? | 2008-07-14 | 2008-07-14 | 45d |
| 187 | 5.10.2.2 | Developing Prototype | 1d? | 2008-07-14 | 2008-07-14 | 45d |
| 188 | 5.10.3 | Design | 1d? | 2008-07-14 | 2008-07-14 | 45d |
| 189 | 5.10.4 | **Implementation** | 1d? | 2008-07-14 | 2008-07-14 | 52d |
| 190 | 5.10.4.1 | Separating out Implementation Deployment Unit | 1d? | 2008-07-14 | 2008-07-14 | 45d |
| 191 | 5.10.4.2 | Changes needed in Deployment Process | 1d? | 2008-07-14 | 2008-07-14 | 45d |
| 192 | 5.11 | **QA cycle** | 1d? | 2008-07-14 | 2008-07-14 | 52d |
| 193 | 5.11.1 | Writing testcases for new functionalities | 1d? | 2008-07-14 | 2008-07-14 | 45d |
| 194 | 5.11.2 | Build 1 for QA | 1d? | 2008-07-14 | 2008-07-14 | 45d |
| 195 | 5.11.3 | Testing Build 1 | 1d? | 2008-07-14 | 2008-07-14 | 45d |
| 196 | 5.11.4 | Fix bugs reported in Build 1 | 1d? | 2008-07-14 | 2008-07-14 | 45d |
| 197 | 5.11.5 | Demo to washU users | 1d? | 2008-07-14 | 2008-07-14 | 45d |
| 198 | 5.11.6 | Build 2 for QA | 1d? | 2008-07-14 | 2008-07-14 | 45d |
| 199 | 5.11.7 | Testing of Build 2 (by QA + washU users) | 1d? | 2008-07-14 | 2008-07-14 | 45d |
| 200 | 5.11.8 | Regression Testing | 1d? | 2008-07-14 | 2008-07-14 | 45d |
| 201 | 5.11.9 | Fix bugs reported in (Build 2 + regression testing) | 1d? | 2008-07-14 | 2008-07-14 | 45d |
| 202 | 5.12 | **Release Candidate 1** | 1d? | 2008-07-14 | 2008-07-14 | 52d |
| 203 | 5.12.1 | Release to QA + washU users for accepatance | 1d? | 2008-07-14 | 2008-07-14 | 45d |
| 204 | 5.12.2 | Verification of fixed bugs | 1d? | 2008-07-14 | 2008-07-14 | 45d |
| 205 | 5.12.3 | UAT by QA + washU users | 1d? | 2008-07-14 | 2008-07-14 | 45d |
| 206 | 5.12.4 | UAT bug fixing | 1d? | 2008-07-14 | 2008-07-14 | 45d |

| ID | WBS | Task | Duration | Start | Finish | Total slack |
| --- | --- | --- | --- | --- | --- | --- |
| 207 | 5.13 | **Release activities** | 1d? | 2008-07-14 | 2008-07-14 | 52d |
| 208 | 5.13.1 | Updating washU servers | 1d? | 2008-07-14 | 2008-07-14 | 45d |
| 209 | 5.13.2 | Updating G-forge | 1d? | 2008-07-14 | 2008-07-14 | 45d |
| 210 | 5.13.3 | Updating website (cab2b.wustl.edu) | 1d? | 2008-07-14 | 2008-07-14 | 45d |
| 211 | 5.13.4 | Updating caBIG Tools Page | 1d? | 2008-07-14 | 2008-07-14 | 45d |
| 212 | 5.14 | **Documentation** | 1d? | 2008-07-14 | 2008-07-14 | 52d |
| 213 | 5.14.1 | Admin end user manual | 1d? | 2008-07-14 | 2008-07-14 | 45d |
| 214 | 5.14.2 | Admin design document | 1d? | 2008-07-14 | 2008-07-14 | 45d |
| 215 | 5.14.3 | Update design document | 1d? | 2008-07-14 | 2008-07-14 | 45d |
| 216 | 5.14.4 | Update end user manual update | 1d? | 2008-07-14 | 2008-07-14 | 45d |
| 217 | 5.15 | **Documentation Review** | 1d? | 2008-07-14 | 2008-07-14 | 52d |
| 218 | 5.15.1 | Review by NCICB Leads | 1d? | 2008-07-14 | 2008-07-14 | 45d |
| 219 | 5.15.2 | D&T Review | 1d? | 2008-07-14 | 2008-07-14 | 45d |
| 220 | 5.16 | Final Documentation | 1d? | 2008-07-14 | 2008-07-14 | 45d |
